# PLN_ODS_2010_2

How a schedule from MS Project changed from version to version. A marks actual dates.

## Version 1 (data date 2011-06-02, saved 2016-05-20, file Gantt de Proyecto v1.1.mpp)

Note of the change: Documentacion de SAFE arriba del server

| ID | WBS | Task | Duration | Start | Finish | Predecessors | Complete | Total float | Constraint |
| --- | --- | --- | --- | --- | --- | --- | --- | --- | --- |
| 1 | 1 | **Sistema adaptativo de formación educativa** | 1355.5d? | 2011-05-06 A | 2016-10-31 |  | 11% | 0d |  |
| 2 | 1.1 | **Etapa 1: Inicio** | 40d | 2016-03-18 A | 2016-05-16 |  | 63% | 109d |  |
| 3 |  | 1.1. Elaborar Acta de (15/4, FIN 20/5) - (Inicio del Proyecto + Presentación) 18/03 al 1/4 | 5d | 2016-03-18 A | 2016-03-25 A |  | 100% |  | start no earlier than 2016-03-18 |
| 4 |  | 1.2. Elaborar Documento de WBS (15/4) | 4d | 2016-03-25 A | 2016-03-31 A | 3 | 100% |  |  |
| 5 |  | 1.3. Elaborar Gantt de Proyect (13/5 - 27/5) | 4d | 2016-03-31 A | 2016-04-06 A | 4 | 100% |  |  |
| 6 |  | 1.4. Elaborar Matriz de Habilidades y Competencias | 4d | 2016-04-06 A | 2016-04-12 A | 5 | 100% |  |  |
| 7 |  | 1.5. Elaborar Matriz de Roles y Responsabilidade | 4d | 2016-04-12 A | 2016-04-18 A | 6 | 100% |  |  |
| 8 |  | 1.6. Elaborar Matriz de Comunicaciones | 4d | 2016-04-19 A | 2016-04-25 A | 7 | 100% |  |  |
| 9 |  | 1.7. Elaborar Matriz de Costos de Proyecto | 5d | 2016-04-25 | 2016-05-02 | 8 |  | 109d |  |
| 10 |  | 1.8. Elaborar Documentos Tabla de Riesgos | 5d | 2016-05-02 | 2016-05-09 | 9 |  | 109d |  |
| 11 |  | 1.9. Aprobar Documentación | 5d | 2016-05-09 | 2016-05-16 | 10 |  | 109d |  |
| 12 | 1.2 | **Entregables Etapa 1** | 0d | 2016-05-16 | 2016-05-16 |  |  | 89d |  |
| 13 |  | [1] Acta de Proyecto | 0d | 2016-05-16 | 2016-05-16 |  |  | 89d | start no earlier than 2016-05-16 |
| 14 |  | [2] Documento de WBS | 0d | 2016-05-16 | 2016-05-16 |  |  | 89d | start no earlier than 2016-05-16 |
| 15 |  | [3] Gantt de Proyect | 0d | 2016-05-16 | 2016-05-16 |  |  | 89d | start no earlier than 2016-05-16 |
| 16 |  | [4] Matriz de Habilidades y Competencias | 0d | 2016-05-16 | 2016-05-16 |  |  | 89d | start no earlier than 2016-05-16 |
| 17 |  | [5] Matriz de Roles y Responsabilidade | 0d | 2016-05-16 | 2016-05-16 |  |  | 89d | start no earlier than 2016-05-16 |
| 18 |  | [6] Matriz de Comunicaciones | 0d | 2016-05-16 | 2016-05-16 |  |  | 89d | start no earlier than 2016-05-16 |
| 19 |  | [7] Matriz de Costos de Proyecto | 0d | 2016-05-16 | 2016-05-16 |  |  | 89d | start no earlier than 2016-05-16 |
| 20 |  | [8] Documentos Tabla de Riesgos | 0d | 2016-05-16 | 2016-05-16 |  |  | 89d | start no earlier than 2016-05-16 |
| 21 | 1.3 | **Etapa 2: Relevamiento y Definición** | 58.25d | 2016-05-17 | 2016-08-16 |  |  | 50.75d |  |
| 22 |  | 2.1. Elaborar Documentación e Información de Cursos | 6d | 2016-05-17 | 2016-05-26 | 12 |  | 91d |  |
| 23 |  | 2.2. Elaborar Informe de Relevamiento | 6d | 2016-05-26 | 2016-06-03 | 22 |  | 91d |  |
| 24 |  | 2.3. Elaborar Casos de Uso del Negocio | 6d | 2016-06-03 | 2016-06-13 | 23 |  | 91d |  |
| 25 |  | 2.4. Elaborar Documento de Arquitectura | 10d | 2016-05-17 | 2016-06-01 | 12 |  | 89d |  |
| 26 |  | 2.5. Elaborar Documento de Diseño de Interfaces | 10d | 2016-06-01 | 2016-06-15 | 25 |  | 89d |  |
| 27 |  | 2.6. Elaborar Presentación Comercial (Comienzo después de finales - FIN 26/8) | 5d | 2016-08-01 | 2016-08-08 |  |  | 50.75d | start no earlier than 2016-08-01 |
| 28 |  | 2.7. Elaborar Poster (Entrega 5/8 ) | 5d | 2016-08-08 | 2016-08-16 | 27 |  | 50.75d |  |
| 29 |  | 2.8. Elaborar Tablero de Control (13/5 - FIN OK) | 3d | 2016-05-23 | 2016-05-27 |  |  | 102.25d | start no earlier than 2016-05-23 |
| 30 | 1.4 | **Entregables Etapa 2** | 51.75d | 2016-05-27 | 2016-08-16 |  |  | 50.75d |  |
| 31 |  | [1] Documentación e Información de Curso | 0d | 2016-06-15 | 2016-06-15 |  |  | 89d | start no earlier than 2016-06-15 |
| 32 |  | [2] Documentación de Relevamiento | 0d | 2016-06-15 | 2016-06-15 |  |  | 89d | start no earlier than 2016-06-15 |
| 33 |  | [3] Documentaicón de Casos de Uso del Negocio | 0d | 2016-06-15 | 2016-06-15 |  |  | 89d | start no earlier than 2016-06-15 |
| 34 |  | [4] Documentación de Arquitectura | 0d | 2016-06-15 | 2016-06-15 |  |  | 89d | start no earlier than 2016-06-15 |
| 35 |  | [5] Documentación de Diseño de Interfaces | 0d | 2016-06-15 | 2016-06-15 |  |  | 89d | start no earlier than 2016-06-15 |
| 36 |  | [6] Presentación Comercial | 0d | 2016-08-16 | 2016-08-16 |  |  | 50.75d | start no earlier than 2016-08-16 |
| 37 |  | [7] Poster | 0d | 2016-08-16 | 2016-08-16 |  |  | 50.75d | start no earlier than 2016-08-16 |
| 38 |  | [8] Tablero de Control | 0d | 2016-05-27 | 2016-05-27 |  |  | 102.5d | start no earlier than 2016-05-27 |
| 39 | 1.5 | **Etapa 3: Análisis, Desarrollo y Testing** | 1355.5d? | 2011-05-06 | 2016-10-31 |  |  | 0d |  |
| 40 | 1.5.1 | **Incremento 3.1** | 39d | 2016-06-16 | 2016-08-17 |  |  | 50d |  |
| 41 |  | 3.1.1. Casos de uso de interfaces de usuario | 3d | 2016-06-16 | 2016-06-22 |  |  | 83d | start no earlier than 2016-06-15 |
| 42 |  | 3.1.2. Casos de uso del módulo de gestión de perfiles | 3d | 2016-06-16 | 2016-06-22 |  |  | 50d | start no earlier than 2016-06-16 |
| 43 |  | 3.1.3. Casos de uso del módulo de gestión de cursos | 3d | 2016-06-22 | 2016-06-27 | 42 |  | 50d |  |
| 44 |  | 3.1.4. Documentación de Casos de Prueba de Sistemas | 3d | 2016-06-22 | 2016-06-27 | 41 |  | 83d |  |
| 45 |  | 3.1.5. Documentación de Casos de Prueba Integrales | 3d | 2016-06-27 | 2016-06-30 | 43 |  | 50d |  |
| 46 |  | 3.1.6. Código fuente de interfaces de usuario | 10d | 2016-06-30 | 2016-07-18 | 45 |  | 50d |  |
| 47 |  | 3.1.7. Código fuente del módulo de gestión de perfiles | 10d | 2016-06-30 | 2016-07-18 | 45 |  | 60d |  |
| 48 |  | 3.1.8. Código fuente del módulo de gestión de cursos | 10d | 2016-07-18 | 2016-08-01 | 46 |  | 50d |  |
| 49 |  | 3.1.9. Documento de pruebas ejecutadas de Sistemas | 5d | 2016-08-01 | 2016-08-08 | 47, 48 |  | 50d |  |
| 50 |  | 3.1.10. Documento de pruebas ejecutadas Integrales | 5d | 2016-08-09 | 2016-08-17 | 49 |  | 50d |  |
| 51 | 1.5.2 | **Entregables Incremento 3.1** | 0d | 2016-08-17 | 2016-08-17 |  |  | 8d |  |
| 52 |  | [1] Código fuente de la aplicación | 0d | 2016-08-17 | 2016-08-17 |  |  | 8d | finish no earlier than 2016-08-17 |
| 53 |  | [2] Manual de usuario. | 0d | 2016-08-17 | 2016-08-17 |  |  | 8d | finish no earlier than 2016-08-17 |
| 54 |  | [3] Documento de pruebas ejecutadas de Sistemas | 0d | 2016-08-17 | 2016-08-17 |  |  | 8d | finish no earlier than 2016-08-17 |
| 55 |  | [4] Documento de pruebas ejecutadas Integrales | 0d | 2016-08-17 | 2016-08-17 |  |  | 8d | finish no earlier than 2016-08-17 |
| 56 | 1.5.3 | **Incremento 3.2** | 42d | 2016-08-17 | 2016-10-19 |  |  | 8d |  |
| 57 |  | 3.2.1. Casos de uso del módulo de autoaprendizaje del sistema | 5d | 2016-08-17 | 2016-08-24 | 51 |  | 45d |  |
| 58 |  | 3.2.2. Casos de uso del submódulo inteligente de selección de contenido (CAT) | 5d | 2016-08-17 | 2016-08-24 | 51 |  | 42d |  |
| 59 |  | 3.2.3. Casos de uso del módulo de gestión de contenido | 5d | 2016-08-17 | 2016-08-24 | 51 |  | 8d |  |
| 60 |  | 3.2.4. Documentación de Casos de Prueba de Sistemas | 3d | 2016-08-24 | 2016-08-29 | 58 |  | 42d |  |
| 61 |  | 3.2.5. Documentación de Casos de Prueba Integrales | 3d | 2016-08-24 | 2016-08-29 | 59 |  | 8d |  |
| 62 |  | 3.2.6. Código fuente del módulo de autoaprendizaje del sistema | 15d | 2016-08-29 | 2016-09-20 | 61 |  | 27d |  |
| 63 |  | 3.2.7. Código fuente del submódulo inteligente de selección de contenido (CAT) | 10d | 2016-08-29 | 2016-09-13 | 61 |  | 8d |  |
| 64 |  | 3.2.8. Código fuente del módulo de gestión de contenido | 10d | 2016-09-13 | 2016-09-27 | 63 |  | 8d |  |
| 65 |  | 3.2.9. Documento de pruebas ejecutadas de Sistemas | 7d | 2016-09-27 | 2016-10-07 | 64 |  | 8d |  |
| 66 |  | 3.2.10. Documento de pruebas ejecutadas Integrales | 7d | 2016-10-07 | 2016-10-19 | 65 |  | 8d |  |
| 67 | 1.5.4 | **Entregables Incremento 3.2** | 1347.5d? | 2011-05-06 | 2016-10-19 |  |  | 6d |  |
| 68 |  | [1] Código fuente de la aplicación | 0d | 2016-10-19 | 2016-10-19 |  |  | 6d | start no earlier than 2016-10-19 |
| 69 |  | [2] Manual de usuario | 0d | 2016-10-19 | 2016-10-19 |  |  | 6d | start no earlier than 2016-10-19 |
| 70 |  | [3] Documento de pruebas ejecutadas (Fin del desarollo 21/10) | 0d | 2016-10-19 | 2016-10-19 |  |  | 6d | start no earlier than 2016-10-19 |

| ID | WBS | Task | Duration | Start | Finish | Predecessors | Total float | Constraint |
| --- | --- | --- | --- | --- | --- | --- | --- | --- |
| 71 |  | 19/9 Seguda Presetación de Tablero de Control (2/9 al 16/9) | 8h? | 2011-05-06 | 2011-05-06 |  | 1352.5d |  |
| 72 | 1.5.5 | **Etapa 4: Implementación** | 2d | 2016-10-19 | 2016-10-21 |  | 6d |  |
| 73 |  | 4.1.Manuales de usuario | 2d | 2016-10-19 | 2016-10-21 | 67 | 6d |  |
| 74 |  | 4.2 Solución integral en entornos Productivos | 2d | 2016-10-19 | 2016-10-21 | 67 | 6d |  |
| 75 | 1.5.6 | **Entregables Etapa 4** | 1349.5d? | 2011-05-06 | 2016-10-21 |  | 0d |  |
| 76 |  | [1] Documentación Manual de Usuario | 0d | 2016-10-21 | 2016-10-21 |  | 0d | start no earlier than 2016-10-21 |
| 77 |  | [2] Documentación Solución integral en entornos Productivos | 0d | 2016-10-21 | 2016-10-21 |  | 0d | finish no earlier than 2016-10-21 |
| 78 |  | Tercera presentación 04/11 (inicio 21/10) | 8h? | 2011-05-06 | 2011-05-06 |  | 1348.5d |  |
| 79 | 1.5.7 | **Etapa 5: Cierre** | 6d | 2016-10-21 | 2016-10-31 |  | 0d |  |
| 80 |  | 5.1 Documento Lecciones Aprendidas | 3d | 2016-10-21 | 2016-10-26 | 75 | 3d |  |
| 81 |  | 5.2 Documento Cierre del Proyecto | 3d | 2016-10-21 | 2016-10-26 | 75 | 0d |  |
| 82 |  | 5.3 Presentación Final (18/11) | 3d | 2016-10-26 | 2016-10-31 | 81 | 0d |  |
| 83 | 1.5.8 | **Entregables Etapa 5** | 3d | 2016-10-26 | 2016-10-31 |  | 0d |  |
| 84 |  | [1] Documento Lecciones Aprendidas | 0d | 2016-10-31 | 2016-10-31 |  | 0d | start no earlier than 2016-10-31 |
| 85 |  | [2] Documento Cierre del Proyecto | 0d | 2016-10-31 | 2016-10-31 |  | 0d | start no earlier than 2016-10-31 |
| 86 |  | [3] Presentación Final | 3d | 2016-10-26 | 2016-10-31 |  | 0d | finish no earlier than 2016-10-31 |

## Version 2 (data date 2011-06-02, saved 2016-05-27, file Gantt de Proyecto v1.3.mpp)

Note of the change: SP - Corrección solapamiento de recursos

Last finish 2016-10-31 → 2016-11-18 (+18d). Complete tasks 6 → 16.

Added:

| ID | Task | Duration | Start | Finish | Constraint | Resources |
| --- | --- | --- | --- | --- | --- | --- |
| 3 | Incio del Proyecto + Presentación | 83h | 2016-03-18 A | 2016-04-01 A | finish no earlier than 2016-04-01 | PM |
| 68 | [*] Elaborar Tablero de Control Segunda Presentación | 10d | 2016-09-02 | 2016-09-16 | start no earlier than 2016-09-02 | PM |
| 74 | [5] Documento de Casos de Uso/Arquitectura Incremento 2 | 0d | 2016-10-14 | 2016-10-14 | start no earlier than 2016-10-14 |  |
| 78 | [*] Elaborar Tablero de Control Tercera Presentación | 4h | 2016-11-04 | 2016-11-04 | finish no earlier than 2016-11-04 | PM |

Changed:

| ID | Task | Start | Finish | Duration | Complete | Total float | Predecessors | Other |
| --- | --- | --- | --- | --- | --- | --- | --- | --- |
| 1 | **Sistema adaptativo de formación educativa** | 2011-05-06 A → 2016-03-18 A (+1778d) | 2016-10-31 → 2016-11-18 (+18d) | 1355.5d? → 162.12d | 11% → 32% |  |  | baseline finish 2016-10-31 → 2016-11-18 |
| 2 | **Etapa 1: Inicio** |  | 2016-05-16 → 2016-05-27 (+11d) | 40d → 47.38d | 63% → 88% | 109d → 114.75d |  | baseline finish 2016-05-16 → 2016-05-27 |
| 4 | 1.1. Elaborar Acta de Proyecto | 2016-03-18 A → 2016-04-15 A (+28d) | 2016-03-25 A → 2016-05-20 A (+56d) | 5d → 24.62d |  |  |  | was named 1.1. Elaborar Acta de (15/4, FIN 20/5) - (Inicio del Proyecto + Presentación) 18/03 al 1/4; constraint start no earlier than 2016-03-18 → finish no earlier than 2016-05-20; baseline start 2016-03-18 → 2016-04-15; baseline finish 2016-03-25 → 2016-05-20 |
| 5 | 1.2. Elaborar Documento de WBS | 2016-03-25 A → 2016-05-06 A (+42d) | 2016-03-31 A → 2016-05-20 A (+50d) | 4d → 10.38d |  |  | 4 → none | was named 1.2. Elaborar Documento de WBS (15/4); constraint none → finish no earlier than 2016-05-20; resources PM → LD; baseline start 2016-03-25 → 2016-05-06; baseline finish 2016-03-31 → 2016-05-20 |
| 6 | 1.3. Elaborar Gantt de Proyect | 2016-03-31 A → 2016-05-13 A (+43d) | 2016-04-06 A → 2016-05-27 A (+51d) | 4d → 9.38d |  |  | 5 → none | was named 1.3. Elaborar Gantt de Proyect (13/5 - 27/5); constraint none → finish no earlier than 2016-05-27; baseline start 2016-03-31 → 2016-05-13; baseline finish 2016-04-06 → 2016-05-27 |
| 7 | 1.4. Elaborar Matriz de Habilidades y Competencias | 2016-04-06 A → 2016-05-06 A (+30d) | 2016-04-12 A → 2016-05-20 A (+38d) | 4d → 6.38d |  |  | 6 → none | constraint none → finish no earlier than 2016-05-20; resources PM → LD; baseline start 2016-04-06 → 2016-05-06; baseline finish 2016-04-12 → 2016-05-20 |
| 8 | 1.5. Elaborar Matriz de Roles y Responsabilidade | 2016-04-12 A → 2016-05-06 A (+24d) | 2016-04-18 A → 2016-05-20 A (+32d) | 4d → 6.38d |  |  | 7 → none | constraint none → finish no earlier than 2016-05-20; resources PM → LD; baseline start 2016-04-12 → 2016-05-06; baseline finish 2016-04-18 → 2016-05-20 |
| 9 | 1.6. Elaborar Matriz de Comunicaciones | 2016-04-19 A → 2016-05-06 A (+17d) | 2016-04-25 A → 2016-05-20 A (+25d) | 4d → 6.38d |  |  | 8 → none | constraint none → finish no earlier than 2016-05-20; resources PM → LD; baseline start 2016-04-19 → 2016-05-06; baseline finish 2016-04-25 → 2016-05-20 |
| 10 | 1.7. Elaborar Matriz de Costos de Proyecto | 2016-04-25 → 2016-05-06 (+11d) | 2016-05-02 → 2016-05-20 (+18d) | 5d → 10.38d |  | 109d → 118.5d | 9 → none | constraint none → start no earlier than 2016-05-06; baseline start 2016-04-25 → 2016-05-06; baseline finish 2016-05-02 → 2016-05-20 |
| 11 | 1.8. Elaborar Documentos Gestión de Riesgos | 2016-05-02 → 2016-05-06 A (+4d) | 2016-05-09 → 2016-05-20 A (+11d) | 5d → 10.38d | 0% → 100% | 109d → none | 10 → none | was named 1.8. Elaborar Documentos Tabla de Riesgos; constraint none → start no earlier than 2016-05-06; resources PM → LD; baseline start 2016-05-02 → 2016-05-06; baseline finish 2016-05-09 → 2016-05-20 |
| 12 | 1.9. Aprobar Documentación | 2016-05-09 → 2016-05-20 (+11d) | 2016-05-16 → 2016-05-20 (+4d) | 5d → 0.88d |  | 109d → 118.5d | 11 → none | constraint none → finish no earlier than 2016-05-20; baseline start 2016-05-09 → 2016-05-20; baseline finish 2016-05-16 → 2016-05-20 |
| 13 | **Entregables Etapa 1** | 2016-05-16 → 2016-05-20 A (+4d) | 2016-05-16 → 2016-05-27 (+11d) | 0d → 3.75d |  | 89d → 114.75d |  | baseline start 2016-05-16 → 2016-05-20; baseline finish 2016-05-16 → 2016-05-27 |
| 14 | [1] Acta de Proyecto | 2016-05-16 → 2016-05-20 A (+4d) | 2016-05-16 → 2016-05-20 A (+4d) |  | 0% → 100% | 89d → none |  | constraint start no earlier than 2016-05-16 → finish no earlier than 2016-05-20; baseline start 2016-05-16 → 2016-05-20; baseline finish 2016-05-16 → 2016-05-20 |
| 15 | [2] Documento de WBS | 2016-05-16 → 2016-05-20 A (+4d) | 2016-05-16 → 2016-05-20 A (+4d) |  | 0% → 100% | 89d → none |  | constraint start no earlier than 2016-05-16 → finish no earlier than 2016-05-20; baseline start 2016-05-16 → 2016-05-20; baseline finish 2016-05-16 → 2016-05-20 |
| 16 | [3] Gantt de Proyect | 2016-05-16 → 2016-05-27 A (+11d) | 2016-05-16 → 2016-05-27 A (+11d) |  | 0% → 100% | 89d → none |  | constraint start no earlier than 2016-05-16 → start no earlier than 2016-05-27; baseline start 2016-05-16 → 2016-05-27; baseline finish 2016-05-16 → 2016-05-27 |
| 17 | [4] Matriz de Habilidades y Competencias | 2016-05-16 → 2016-05-20 A (+4d) | 2016-05-16 → 2016-05-20 A (+4d) |  | 0% → 100% | 89d → none |  | constraint start no earlier than 2016-05-16 → start no earlier than 2016-05-20; baseline start 2016-05-16 → 2016-05-20; baseline finish 2016-05-16 → 2016-05-20 |
| 18 | [5] Matriz de Roles y Responsabilidade | 2016-05-16 → 2016-05-20 A (+4d) | 2016-05-16 → 2016-05-20 A (+4d) |  | 0% → 100% | 89d → none |  | constraint start no earlier than 2016-05-16 → start no earlier than 2016-05-20; baseline start 2016-05-16 → 2016-05-20; baseline finish 2016-05-16 → 2016-05-20 |
| 19 | [6] Matriz de Comunicaciones | 2016-05-16 → 2016-05-20 A (+4d) | 2016-05-16 → 2016-05-20 A (+4d) |  | 0% → 100% | 89d → none |  | constraint start no earlier than 2016-05-16 → start no earlier than 2016-05-20; baseline start 2016-05-16 → 2016-05-20; baseline finish 2016-05-16 → 2016-05-20 |
| 20 | [7] Matriz de Costos de Proyecto | 2016-05-16 → 2016-05-20 (+4d) | 2016-05-16 → 2016-05-20 (+4d) |  |  | 89d → 118.5d |  | constraint start no earlier than 2016-05-16 → start no earlier than 2016-05-20; baseline start 2016-05-16 → 2016-05-20; baseline finish 2016-05-16 → 2016-05-20 |
| 21 | [8] Documentos Tabla de Riesgos | 2016-05-16 → 2016-05-20 A (+4d) | 2016-05-16 → 2016-05-20 A (+4d) |  | 0% → 100% | 89d → none |  | constraint start no earlier than 2016-05-16 → start no earlier than 2016-05-20; baseline start 2016-05-16 → 2016-05-20; baseline finish 2016-05-16 → 2016-05-20 |
| 22 | **Etapa 2: Relevamiento y Definición** | 2016-05-17 → 2016-05-23 A (+6d) | 2016-08-16 → 2016-08-26 (+10d) | 58.25d → 61.75d | 0% → 8% | 50.75d → 56d |  | baseline start 2016-05-17 → 2016-05-23; baseline finish 2016-08-16 → 2016-08-26 |
| 23 | 2.1. Elaborar Documentación e Información de Cursos | 2016-05-17 → 2016-05-27 (+10d) | 2016-05-26 → 2016-05-31 (+5d) | 6d → 3d |  | 91d → 110.62d | 13 → none | constraint none → start no earlier than 2016-05-27; baseline start 2016-05-17 → 2016-05-27; baseline finish 2016-05-26 → 2016-05-31 |
| 24 | 2.2. Elaborar Informe de Relevamiento | 2016-05-26 → 2016-06-02 (+7d) |  | 6d → 1d |  | 91d → 109d |  | constraint none → finish no earlier than 2016-06-03; baseline start 2016-05-26 → 2016-06-02 |
| 25 | 2.3. Elaborar Casos de Uso del Negocio |  | 2016-06-13 → 2016-06-06 (-7d) | 6d → 1d |  | 91d → 109d |  | constraint none → finish no earlier than 2016-06-03; baseline finish 2016-06-13 → 2016-06-06 |
| 26 | 2.4. Elaborar Documento de Arquitectura | 2016-05-17 → 2016-05-27 (+10d) | 2016-06-01 → 2016-05-30 (-2d) | 10d → 2d |  | 89d → 110.62d | 13 → none | constraint none → start no earlier than 2016-05-27; baseline start 2016-05-17 → 2016-05-27; baseline finish 2016-06-01 → 2016-05-30 |
| 27 | 2.5. Elaborar Documento de Diseño de Interfaces | 2016-06-01 → 2016-05-31 (-1d) | 2016-06-15 → 2016-06-03 (-12d) | 10d → 3d |  | 89d → 110.62d |  | baseline start 2016-06-01 → 2016-05-31; baseline finish 2016-06-15 → 2016-06-03 |
| 28 | 2.6. Elaborar Presentación Comercial |  | 2016-08-08 → 2016-08-26 (+18d) | 5d → 17.88d |  | 50.75d → 56d |  | was named 2.6. Elaborar Presentación Comercial (Comienzo después de finales - FIN 26/8); baseline finish 2016-08-08 → 2016-08-26 |
| 29 | 2.7. Elaborar Poster | 2016-08-08 → 2016-08-01 (-7d) | 2016-08-16 → 2016-08-05 (-11d) | 5d → 4.62d |  | 50.75d → 69.25d | 28 → none | was named 2.7. Elaborar Poster (Entrega 5/8 ); constraint none → finish no earlier than 2016-08-05; resources PM → LD; baseline start 2016-08-08 → 2016-08-01; baseline finish 2016-08-16 → 2016-08-05 |
| 30 | 2.8. Elaborar Tablero de Control | 2016-05-23 A | 2016-05-27 A |  | 0% → 100% | 102.25d → none |  | was named 2.8. Elaborar Tablero de Control (13/5 - FIN OK); constraint start no earlier than 2016-05-23 → finish no earlier than 2016-05-27 |
| 31 | **Entregables Etapa 2** |  | 2016-08-16 → 2016-08-26 (+10d) | 51.75d → 58.75d |  | 50.75d → 56d |  | baseline finish 2016-08-16 → 2016-08-26 |
| 32 | [1] Documentación e Información de Curso | 2016-06-15 → 2016-06-03 (-12d) | 2016-06-15 → 2016-06-03 (-12d) |  |  | 89d → 110d |  | constraint start no earlier than 2016-06-15 → finish no earlier than 2016-06-03; baseline start 2016-06-15 → 2016-06-03; baseline finish 2016-06-15 → 2016-06-03 |
| 33 | [2] Documentación de Relevamiento | 2016-06-15 → 2016-06-03 (-12d) | 2016-06-15 → 2016-06-03 (-12d) |  |  | 89d → 110d |  | constraint start no earlier than 2016-06-15 → finish no earlier than 2016-06-03; baseline start 2016-06-15 → 2016-06-03; baseline finish 2016-06-15 → 2016-06-03 |
| 34 | [3] Documentaicón de Casos de Uso del Negocio | 2016-06-15 → 2016-06-03 (-12d) | 2016-06-15 → 2016-06-03 (-12d) |  |  | 89d → 110d |  | constraint start no earlier than 2016-06-15 → finish no earlier than 2016-06-03; baseline start 2016-06-15 → 2016-06-03; baseline finish 2016-06-15 → 2016-06-03 |
| 35 | [4] Documentación de Arquitectura | 2016-06-15 → 2016-06-03 (-12d) | 2016-06-15 → 2016-06-03 (-12d) |  |  | 89d → 110d |  | constraint start no earlier than 2016-06-15 → finish no earlier than 2016-06-03; baseline start 2016-06-15 → 2016-06-03; baseline finish 2016-06-15 → 2016-06-03 |
| 36 | [5] Documentación de Diseño de Interfaces | 2016-06-15 → 2016-06-03 (-12d) | 2016-06-15 → 2016-06-03 (-12d) |  |  | 89d → 110d |  | constraint start no earlier than 2016-06-15 → start no earlier than 2016-06-03; baseline start 2016-06-15 → 2016-06-03; baseline finish 2016-06-15 → 2016-06-03 |
| 37 | [6] Documentación Presentación Comercial | 2016-08-16 → 2016-08-26 (+10d) | 2016-08-16 → 2016-08-26 (+10d) |  |  | 50.75d → 56d |  | was named [6] Presentación Comercial; constraint start no earlier than 2016-08-16 → start no earlier than 2016-08-26; baseline start 2016-08-16 → 2016-08-26; baseline finish 2016-08-16 → 2016-08-26 |
| 38 | [7] Documentación Poster | 2016-08-16 → 2016-08-05 (-11d) | 2016-08-16 → 2016-08-05 (-11d) |  |  | 50.75d → 69.25d |  | was named [7] Poster; constraint start no earlier than 2016-08-16 → finish no earlier than 2016-08-05; baseline start 2016-08-16 → 2016-08-05; baseline finish 2016-08-16 → 2016-08-05 |
| 39 | [8] Documentación Tablero de Control Primera Presentación |  |  |  |  | 102.5d → 114.75d |  | was named [8] Tablero de Control |
| 40 | **Etapa 3: Análisis, Desarrollo y Testing** | 2011-05-06 → 2016-06-13 (+1865d) | 2016-10-31 → 2016-11-18 (+18d) | 1355.5d? → 105.12d |  |  |  | baseline start 2016-06-16 → 2016-06-13; baseline finish 2016-10-31 → 2016-11-18 |
| 41 | **Incremento 3.1** | 2016-06-16 → 2016-06-13 (-3d) | 2016-08-17 → 2016-08-05 (-12d) | 39d → 36d |  | 50d → 69.12d |  | baseline start 2016-06-16 → 2016-06-13; baseline finish 2016-08-17 → 2016-08-05 |
| 42 | 3.1.1. Casos de uso de interfaces de usuario | 2016-06-16 → 2016-06-13 (-3d) | 2016-06-22 → 2016-06-21 (-1d) | 3d → 5d |  | 83d → 97.12d |  | constraint start no earlier than 2016-06-15 → start no earlier than 2016-06-13; baseline start 2016-06-16 → 2016-06-13; baseline finish 2016-06-22 → 2016-06-21 |
| 43 | 3.1.2. Casos de uso del módulo de gestión de perfiles | 2016-06-16 → 2016-06-13 (-3d) | 2016-06-22 → 2016-06-21 (-1d) | 3d → 5d |  | 50d → 69.12d |  | constraint start no earlier than 2016-06-16 → start no earlier than 2016-06-13; baseline start 2016-06-16 → 2016-06-13; baseline finish 2016-06-22 → 2016-06-21 |
| 44 | 3.1.3. Casos de uso del módulo de gestión de cursos | 2016-06-22 → 2016-06-21 (-1d) | 2016-06-27 → 2016-06-24 (-3d) |  |  | 50d → 69.12d |  | baseline start 2016-06-22 → 2016-06-21; baseline finish 2016-06-27 → 2016-06-24 |
| 45 | 3.1.4. Documentación de Casos de Prueba de Sistemas | 2016-06-22 → 2016-06-21 (-1d) | 2016-06-27 → 2016-06-24 (-3d) |  |  | 83d → 97.12d |  | baseline start 2016-06-22 → 2016-06-21; baseline finish 2016-06-27 → 2016-06-24 |
| 46 | 3.1.5. Documentación de Casos de Prueba Integrales | 2016-06-27 → 2016-06-24 (-3d) | 2016-06-30 → 2016-06-29 (-1d) |  |  | 50d → 69.12d |  | baseline start 2016-06-27 → 2016-06-24; baseline finish 2016-06-30 → 2016-06-29 |
| 47 | 3.1.6. Código fuente de interfaces de usuario | 2016-06-30 → 2016-06-29 (-1d) | 2016-07-18 → 2016-07-15 (-3d) |  |  | 50d → 69.12d |  | baseline start 2016-06-30 → 2016-06-29; baseline finish 2016-07-18 → 2016-07-15 |
| 48 | 3.1.7. Código fuente del módulo de gestión de perfiles | 2016-06-30 → 2016-06-29 (-1d) | 2016-07-18 → 2016-07-06 (-12d) | 10d → 5d |  | 60d → 79.12d |  | baseline start 2016-06-30 → 2016-06-29; baseline finish 2016-07-18 → 2016-07-06 |
| 49 | 3.1.8. Código fuente del módulo de gestión de cursos | 2016-07-18 → 2016-07-15 (-3d) | 2016-08-01 → 2016-07-22 (-10d) | 10d → 5d |  | 50d → 69.12d |  | baseline start 2016-07-18 → 2016-07-15; baseline finish 2016-08-01 → 2016-07-22 |
| 50 | 3.1.9. Documento de pruebas ejecutadas de Sistemas | 2016-08-01 → 2016-07-22 (-10d) | 2016-08-08 → 2016-07-29 (-10d) |  |  | 50d → 69.12d |  | baseline start 2016-08-01 → 2016-07-22; baseline finish 2016-08-08 → 2016-07-29 |
| 51 | 3.1.10. Documento de pruebas ejecutadas Integrales | 2016-08-09 → 2016-07-29 (-11d) | 2016-08-17 → 2016-08-05 (-12d) |  |  | 50d → 69.12d |  | baseline start 2016-08-09 → 2016-07-29; baseline finish 2016-08-17 → 2016-08-05 |
| 52 | **Entregables Incremento 3.1** | 2016-08-17 → 2016-08-05 (-12d) | 2016-08-17 → 2016-08-05 (-12d) |  |  | 8d → 27.12d |  | baseline start 2016-08-17 → 2016-08-05; baseline finish 2016-08-17 → 2016-08-05 |
| 53 | [1] Código fuente de la aplicación | 2016-08-17 → 2016-08-05 (-12d) | 2016-08-17 → 2016-08-05 (-12d) |  |  | 8d → 27.12d |  | constraint finish no earlier than 2016-08-17 → start no earlier than 2016-08-05; baseline start 2016-08-17 → 2016-08-05; baseline finish 2016-08-17 → 2016-08-05 |
| 54 | [2] Manual de usuario. | 2016-08-17 → 2016-08-05 (-12d) | 2016-08-17 → 2016-08-05 (-12d) |  |  | 8d → 27.12d |  | constraint finish no earlier than 2016-08-17 → start no earlier than 2016-08-05; baseline start 2016-08-17 → 2016-08-05; baseline finish 2016-08-17 → 2016-08-05 |
| 55 | [3] Documento de pruebas ejecutadas de Sistemas e Integrales | 2016-08-17 → 2016-08-05 (-12d) | 2016-08-17 → 2016-08-05 (-12d) |  |  | 8d → 27.12d |  | was named [3] Documento de pruebas ejecutadas de Sistemas; constraint finish no earlier than 2016-08-17 → start no earlier than 2016-08-05; baseline start 2016-08-17 → 2016-08-05; baseline finish 2016-08-17 → 2016-08-05 |
| 56 | [4] Documento de Casos de Uso/Arquitectura Incremento 1 | 2016-08-17 → 2016-08-05 (-12d) | 2016-08-17 → 2016-08-05 (-12d) |  |  | 8d → 27.12d |  | was named [4] Documento de pruebas ejecutadas Integrales; constraint finish no earlier than 2016-08-17 → start no earlier than 2016-08-05; baseline start 2016-08-17 → 2016-08-05; baseline finish 2016-08-17 → 2016-08-05 |
| 57 | **Incremento 3.2** | 2016-08-17 → 2016-08-08 (-9d) | 2016-10-19 → 2016-10-14 (-5d) | 42d → 45.38d |  | 8d → 23.75d |  | baseline start 2016-08-17 → 2016-08-08; baseline finish 2016-10-19 → 2016-10-14 |
| 58 | 3.2.1. Casos de uso del módulo de autoaprendizaje del sistema | 2016-08-17 → 2016-08-08 (-9d) | 2016-08-24 → 2016-08-16 (-8d) |  |  | 45d → 64.12d |  | baseline start 2016-08-17 → 2016-08-08; baseline finish 2016-08-24 → 2016-08-16 |
| 59 | 3.2.2. Casos de uso del submódulo inteligente de selección de contenido (CAT) | 2016-08-17 → 2016-08-08 (-9d) | 2016-08-24 → 2016-08-16 (-8d) |  |  | 42d → 61.12d |  | baseline start 2016-08-17 → 2016-08-08; baseline finish 2016-08-24 → 2016-08-16 |
| 60 | 3.2.3. Casos de uso del módulo de gestión de contenido | 2016-08-17 → 2016-08-08 (-9d) | 2016-08-24 → 2016-08-16 (-8d) |  |  | 8d → 27.12d |  | baseline start 2016-08-17 → 2016-08-08; baseline finish 2016-08-24 → 2016-08-16 |
| 61 | 3.2.4. Documentación de Casos de Prueba de Sistemas | 2016-08-24 → 2016-08-16 (-8d) | 2016-08-29 → 2016-08-19 (-10d) |  |  | 42d → 61.12d |  | baseline start 2016-08-24 → 2016-08-16; baseline finish 2016-08-29 → 2016-08-19 |
| 62 | 3.2.5. Documentación de Casos de Prueba Integrales | 2016-08-24 → 2016-08-16 (-8d) | 2016-08-29 → 2016-08-19 (-10d) |  |  | 8d → 27.12d |  | baseline start 2016-08-24 → 2016-08-16; baseline finish 2016-08-29 → 2016-08-19 |
| 63 | 3.2.6. Código fuente del módulo de autoaprendizaje del sistema | 2016-08-29 → 2016-08-19 (-10d) | 2016-09-20 → 2016-09-12 (-8d) |  |  | 27d → 46.12d |  | baseline start 2016-08-29 → 2016-08-19; baseline finish 2016-09-20 → 2016-09-12 |
| 64 | 3.2.7. Código fuente del submódulo inteligente de selección de contenido (CAT) | 2016-08-29 → 2016-08-19 (-10d) | 2016-09-13 → 2016-09-02 (-11d) |  |  | 8d → 27.12d |  | baseline start 2016-08-29 → 2016-08-19; baseline finish 2016-09-13 → 2016-09-02 |
| 65 | 3.2.8. Código fuente del módulo de gestión de contenido | 2016-09-13 → 2016-09-05 (-8d) | 2016-09-27 → 2016-09-19 (-8d) |  |  | 8d → 27.12d |  | baseline start 2016-09-13 → 2016-09-05; baseline finish 2016-09-27 → 2016-09-19 |
| 66 | 3.2.9. Documento de pruebas ejecutadas de Sistemas | 2016-09-27 → 2016-09-19 (-8d) | 2016-10-07 → 2016-09-28 (-9d) |  |  | 8d → 27.12d |  | baseline start 2016-09-27 → 2016-09-19; baseline finish 2016-10-07 → 2016-09-28 |
| 67 | 3.2.10. Documento de pruebas ejecutadas Integrales | 2016-10-07 → 2016-10-04 (-3d) | 2016-10-19 → 2016-10-14 (-5d) |  |  | 8d → 23.75d |  | constraint none → finish no earlier than 2016-10-14; baseline start 2016-10-07 → 2016-10-04; baseline finish 2016-10-19 → 2016-10-14 |
| 69 | **Entregables Incremento 3.2** | 2011-05-06 → 2016-09-16 (+1960d) | 2016-10-19 → 2016-10-14 (-5d) | 1347.5d? → 18.38d |  | 6d → 21.75d |  | baseline start 2016-10-19 → 2016-09-16; baseline finish 2016-10-19 → 2016-10-14 |
| 70 | [1] Código fuente de la aplicación | 2016-10-19 → 2016-10-14 (-5d) | 2016-10-19 → 2016-10-14 (-5d) |  |  | 6d → 21.75d |  | constraint start no earlier than 2016-10-19 → start no earlier than 2016-10-14; baseline start 2016-10-19 → 2016-10-14; baseline finish 2016-10-19 → 2016-10-14 |
| 71 | [2] Manual de usuario | 2016-10-19 → 2016-10-14 (-5d) | 2016-10-19 → 2016-10-14 (-5d) |  |  | 6d → 21.75d |  | constraint start no earlier than 2016-10-19 → start no earlier than 2016-10-14; baseline start 2016-10-19 → 2016-10-14; baseline finish 2016-10-19 → 2016-10-14 |
| 72 | [3] Documento de pruebas ejecutadas (Fin del desarollo 21/10) | 2016-10-19 → 2016-10-14 (-5d) | 2016-10-19 → 2016-10-14 (-5d) |  |  | 6d → 21.75d |  | constraint start no earlier than 2016-10-19 → start no earlier than 2016-10-14; baseline start 2016-10-19 → 2016-10-14; baseline finish 2016-10-19 → 2016-10-14 |

| ID | Task | Start | Finish | Duration | Total float | Predecessors | Other |
| --- | --- | --- | --- | --- | --- | --- | --- |
| 73 | [4] Documento Tablero de Control Segunda Presentación | 2011-05-06 → 2016-09-16 (+1960d) | 2011-05-06 → 2016-09-16 (+1960d) | 8h? → 0d | 1352.5d → 40.12d |  | was named 19/9 Seguda Presetación de Tablero de Control (2/9 al 16/9); constraint none → start no earlier than 2016-09-16; baseline start none → 2016-09-16; baseline finish none → 2016-09-16 |
| 75 | **Etapa 4: Implementación** | 2016-10-19 → 2016-10-14 (-5d) | 2016-10-21 → 2016-11-04 (+14d) | 2d → 14.25d | 6d → 9.5d |  | baseline start 2016-10-19 → 2016-10-14; baseline finish 2016-10-21 → 2016-11-04 |
| 76 | 4.1.Manuales de usuario | 2016-10-19 → 2016-10-14 (-5d) | 2016-10-21 → 2016-10-18 (-3d) |  | 6d → 21.75d |  | baseline start 2016-10-19 → 2016-10-14; baseline finish 2016-10-21 → 2016-10-18 |
| 77 | 4.2 Solución integral en entornos Productivos | 2016-10-19 → 2016-10-14 (-5d) | 2016-10-21 → 2016-10-18 (-3d) |  | 6d → 21.75d |  | baseline start 2016-10-19 → 2016-10-14; baseline finish 2016-10-21 → 2016-10-18 |
| 79 | **Entregables Etapa 4** | 2011-05-06 → 2016-10-21 (+1995d) | 2016-10-21 → 2016-11-04 (+14d) | 1349.5d? → 9.62d | 0d → 6.5d |  | baseline finish 2016-10-21 → 2016-11-04 |
| 82 | [3] Documentación Tablero de Control Tercera Presentación | 2011-05-06 → 2016-11-04 (+2009d) | 2011-05-06 → 2016-11-04 (+2009d) | 8h? → 0d | 1348.5d → 6.5d |  | was named Tercera presentación 04/11 (inicio 21/10); constraint none → finish no earlier than 2016-11-04; baseline start none → 2016-11-04; baseline finish none → 2016-11-04 |
| 83 | **Etapa 5: Cierre** | 2016-10-21 → 2016-11-11 (+21d) | 2016-10-31 → 2016-11-18 (+18d) | 6d → 5.62d |  |  | baseline start 2016-10-21 → 2016-11-11; baseline finish 2016-10-31 → 2016-11-18 |
| 84 | 5.1 Documento Lecciones Aprendidas | 2016-10-21 → 2016-11-15 (+25d) | 2016-10-26 → 2016-11-18 (+23d) |  | 3d → 0d |  | constraint none → finish no earlier than 2016-11-18; baseline start 2016-10-21 → 2016-11-15; baseline finish 2016-10-26 → 2016-11-18 |
| 85 | 5.2 Documento Cierre del Proyecto | 2016-10-21 → 2016-11-15 (+25d) | 2016-10-26 → 2016-11-18 (+23d) |  |  |  | constraint none → finish no earlier than 2016-11-18; baseline start 2016-10-21 → 2016-11-15; baseline finish 2016-10-26 → 2016-11-18 |
| 86 | 5.3 Presentación Final (18/11) | 2016-10-26 → 2016-11-11 (+16d) | 2016-10-31 → 2016-11-18 (+18d) | 3d → 5d | 0d → 0.62d | 85 → none | constraint none → start no earlier than 2016-11-11; baseline start 2016-10-26 → 2016-11-11; baseline finish 2016-10-31 → 2016-11-18 |
| 87 | **Entregables Etapa 5** | 2016-10-26 → 2016-11-18 (+23d) | 2016-10-31 → 2016-11-18 (+18d) | 3d → 0d | 0d → 0.62d |  | baseline start 2016-10-26 → 2016-11-18; baseline finish 2016-10-31 → 2016-11-18 |
| 88 | [1] Documento Lecciones Aprendidas | 2016-10-31 → 2016-11-18 (+18d) | 2016-10-31 → 2016-11-18 (+18d) |  | 0d → 0.62d |  | constraint start no earlier than 2016-10-31 → start no earlier than 2016-11-18; baseline start 2016-10-31 → 2016-11-18; baseline finish 2016-10-31 → 2016-11-18 |
| 89 | [2] Documento Cierre del Proyecto | 2016-10-31 → 2016-11-18 (+18d) | 2016-10-31 → 2016-11-18 (+18d) |  | 0d → 0.62d |  | constraint start no earlier than 2016-10-31 → start no earlier than 2016-11-18; baseline start 2016-10-31 → 2016-11-18; baseline finish 2016-10-31 → 2016-11-18 |
| 90 | [3] Presentación Final | 2016-10-26 → 2016-11-18 (+23d) | 2016-10-31 → 2016-11-18 (+18d) | 3d → 0d | 0d → 0.62d |  | constraint finish no earlier than 2016-10-31 → finish no earlier than 2016-11-18; baseline start 2016-10-26 → 2016-11-18; baseline finish 2016-10-31 → 2016-11-18 |

## Version 3 (data date 2011-06-02, saved 2016-06-25, file Gantt de Proyecto v1.4.mpp)

Note of the change: Nueva Version

Last finish stays 2016-11-18. Complete tasks 16 → 13.

Added:

| ID | Task | Duration | Start | Finish | Predecessors | Resources |
| --- | --- | --- | --- | --- | --- | --- |
| 23 | 2.2. Elaborar Casos de Uso del Negocio | 26d | 2016-05-20 A | 2016-07-01 | 14 | AFSR1 |

Removed: 13 Entregables Etapa 1; 24 2.2. Elaborar Informe de Relevamiento; 25 2.3. Elaborar Casos de Uso del Negocio; 31 Entregables Etapa 2; 33 [2] Documentación de Relevamiento; 52 Entregables Incremento 3.1; 69 Entregables Incremento 3.2; 79 Entregables Etapa 4; 87 Entregables Etapa 5

Changed:

| ID | Task | Start | Finish | Duration | Complete | Total float | Predecessors | Other |
| --- | --- | --- | --- | --- | --- | --- | --- | --- |
| 1 | **Sistema adaptativo de formación educativa** | 2016-03-18 A → 2016-04-01 A (+14d) |  | 162.12d → 151.25d | 32% → 20% |  |  | baseline start 2016-03-18 → 2016-04-01 |
| 2 | **Etapa 1: Inicio** | 2016-03-18 A → 2016-04-01 A (+14d) | 2016-05-27 → 2016-07-01 (+35d) | 47.38d → 59.25d | 88% → 39% | 114.75d → 92d |  | baseline start 2016-03-18 → 2016-04-01; baseline finish 2016-05-27 → 2016-07-01 |
| 3 | Incio del Proyecto + Presentación | 2016-03-18 A → 2016-04-01 A (+14d) | 2016-04-01 A → 2016-04-18 A (+17d) |  |  |  |  | baseline start 2016-03-18 → 2016-04-01; baseline finish 2016-04-01 → 2016-04-18 |
| 4 | 1.1. Elaborar Acta de Proyecto | 2016-04-15 A → 2016-05-20 A (+35d) | 2016-05-20 A → 2016-07-01 (+42d) | 24.62d → 26d | 100% → 0% | none → 92d |  | constraint finish no earlier than 2016-05-20 → none; baseline start 2016-04-15 → 2016-05-20; baseline finish 2016-05-20 → 2016-07-01 |
| 5 | 1.2. Elaborar Documento de WBS | 2016-05-06 A → 2016-05-20 A (+14d) | 2016-05-20 A → 2016-06-07 A (+18d) |  |  |  |  | baseline start 2016-05-06 → 2016-05-20; baseline finish 2016-05-20 → 2016-06-07 |
| 6 | 1.3. Elaborar Gantt de Proyect | 2016-05-13 A → 2016-05-27 A (+14d) | 2016-05-27 A → 2016-06-29 (+33d) | 9.38d → 21d | 100% → 45% | none → 93.25d |  | constraint finish no earlier than 2016-05-27 → none; baseline start 2016-05-13 → 2016-05-27; baseline finish 2016-05-27 → 2016-06-29 |
| 7 | 1.4. Elaborar Matriz de Habilidades y Competencias | 2016-05-06 A → 2016-05-20 A (+14d) | 2016-05-20 A → 2016-06-07 A (+18d) |  |  |  |  | baseline start 2016-05-06 → 2016-05-20; baseline finish 2016-05-20 → 2016-06-07 |
| 8 | 1.5. Elaborar Matriz de Roles y Responsabilidade | 2016-05-06 A → 2016-05-20 A (+14d) | 2016-05-20 A → 2016-06-07 A (+18d) |  |  |  |  | baseline start 2016-05-06 → 2016-05-20; baseline finish 2016-05-20 → 2016-06-07 |
| 9 | 1.6. Elaborar Matriz de Comunicaciones | 2016-05-06 A → 2016-05-20 A (+14d) | 2016-05-20 A → 2016-06-07 A (+18d) |  |  |  |  | baseline start 2016-05-06 → 2016-05-20; baseline finish 2016-05-20 → 2016-06-07 |
| 10 | 1.7. Elaborar Matriz de Costos de Proyecto | 2016-05-06 → 2016-05-20 A (+14d) | 2016-05-20 → 2016-06-17 (+28d) | 10.38d → 18d |  | 118.5d → 100d |  | baseline start 2016-05-06 → 2016-05-20; baseline finish 2016-05-20 → 2016-06-17 |
| 11 | 1.8. Elaborar Documentos Gestión de Riesgos | 2016-05-06 A → 2016-05-20 A (+14d) | 2016-05-20 A → 2016-06-24 (+35d) | 10.38d → 21.75d | 100% → 48% | none → 96.25d |  | constraint start no earlier than 2016-05-06 → none; baseline start 2016-05-06 → 2016-05-20; baseline finish 2016-05-20 → 2016-06-24 |
| 12 | 1.9. Aprobar Documentación | 2016-05-20 A | 2016-05-20 → 2016-07-01 (+42d) | 0.88d → 26d |  | 118.5d → 92d |  | constraint finish no earlier than 2016-05-20 → none; baseline finish 2016-05-20 → 2016-07-01 |
| 13 | [1] Acta de Proyecto | 2016-05-20 A → 2016-07-01 (+42d) | 2016-05-20 A → 2016-07-01 (+42d) |  | 100% → 0% | none → 92d | none → 4 | constraint finish no earlier than 2016-05-20 → none; baseline start 2016-05-20 → 2016-07-01; baseline finish 2016-05-20 → 2016-07-01 |
| 14 | [2] Documento de WBS |  |  |  |  |  | none → 5 |  |
| 15 | [3] Gantt de Proyect | 2016-05-27 A → 2016-06-29 (+33d) | 2016-05-27 A → 2016-06-29 (+33d) |  | 100% → 0% | none → 93.25d | none → 6 | constraint start no earlier than 2016-05-27 → none; baseline start 2016-05-27 → 2016-06-29; baseline finish 2016-05-27 → 2016-06-29 |
| 16 | [4] Matriz de Habilidades y Competencias |  |  |  |  |  | none → 7 |  |
| 17 | [5] Matriz de Roles y Responsabilidade |  |  |  |  |  | none → 8 |  |
| 18 | [6] Matriz de Comunicaciones |  |  |  |  |  | none → 9 |  |
| 19 | [7] Matriz de Costos de Proyecto | 2016-05-20 A | 2016-05-20 A |  | 0% → 100% | 118.5d → none | none → 10 |  |
| 20 | [8] Documentos Tabla de Riesgos | 2016-05-20 A → 2016-06-24 (+35d) | 2016-05-20 A → 2016-06-24 (+35d) |  | 100% → 0% | none → 96.25d | none → 11 | constraint start no earlier than 2016-05-20 → finish no earlier than 2016-06-24; baseline start 2016-05-20 → 2016-06-24; baseline finish 2016-05-20 → 2016-06-24 |
| 21 | **Etapa 2: Relevamiento y Definición** | 2016-05-23 A → 2016-05-20 A (-3d) |  | 61.75d → 62.12d | 8% → 20% | 56d → 0d |  | baseline start 2016-05-23 → 2016-05-20 |
| 22 | 2.1. Elaborar Documentación e Información de Cursos | 2016-05-27 → 2016-05-20 A (-7d) | 2016-05-31 → 2016-06-24 A (+24d) | 3d → 21d | 0% → 100% | 110.62d → none | none → 14 | constraint start no earlier than 2016-05-27 → none; resources AFSR1; AFSR2; AFSSR2 → AFSR2; AFSSR2; baseline start 2016-05-27 → 2016-05-20; baseline finish 2016-05-31 → 2016-06-24 |
| 24 | 2.3. Elaborar Documento de Arquitectura | 2016-05-27 → 2016-05-20 A (-7d) | 2016-05-30 → 2016-07-01 (+32d) | 2d → 26d |  | 110.62d → 0d | none → 14 | was named 2.4. Elaborar Documento de Arquitectura; constraint start no earlier than 2016-05-27 → none; resources LD; ARQ → ARQ; baseline start 2016-05-27 → 2016-05-20; baseline finish 2016-05-30 → 2016-07-01 |
| 25 | 2.4. Elaborar Documento de Diseño de Interfaces | 2016-05-31 → 2016-05-20 A (-11d) | 2016-06-03 → 2016-07-01 (+28d) | 3d → 26d |  | 110.62d → 0d | 24 → 14 | was named 2.5. Elaborar Documento de Diseño de Interfaces; resources LD; ARQ → LD; baseline start 2016-05-31 → 2016-05-20; baseline finish 2016-06-03 → 2016-07-01 |
| 26 | 2.5. Elaborar Presentación Comercial | 2016-08-01 → 2016-08-16 (+15d) |  | 17.88d → 8d |  | 56d → 0d |  | was named 2.6. Elaborar Presentación Comercial; constraint start no earlier than 2016-08-01 → start no earlier than 2016-08-15; baseline start 2016-08-01 → 2016-08-16 |
| 27 | 2.6. Elaborar Poster | 2016-08-01 → 2016-07-25 (-7d) |  | 4.62d → 9d |  | 69.25d → 0d |  | was named 2.7. Elaborar Poster; constraint finish no earlier than 2016-08-05 → start no earlier than 2016-07-25; baseline start 2016-08-01 → 2016-07-25 |
| 28 | 2.7. Elaborar Tablero de Control | 2016-05-23 A → 2016-05-27 A (+4d) | 2016-05-27 A → 2016-06-01 A (+5d) |  |  |  |  | was named 2.8. Elaborar Tablero de Control; constraint finish no earlier than 2016-05-27 → none; baseline start 2016-05-23 → 2016-05-27; baseline finish 2016-05-27 → 2016-06-01 |
| 29 | [1] Documentación e Información de Curso | 2016-06-03 → 2016-06-24 (+21d) | 2016-06-03 → 2016-06-24 (+21d) |  |  | 110d → 0d | none → 22 | constraint finish no earlier than 2016-06-03 → finish no earlier than 2016-06-17; baseline start 2016-06-03 → 2016-06-24; baseline finish 2016-06-03 → 2016-06-24 |
| 30 | [2] Documentaicón de Casos de Uso del Negocio | 2016-06-03 → 2016-07-01 (+28d) | 2016-06-03 → 2016-07-01 (+28d) |  |  | 110d → 0d | none → 23 | was named [3] Documentaicón de Casos de Uso del Negocio; constraint finish no earlier than 2016-06-03 → none; baseline start 2016-06-03 → 2016-07-01; baseline finish 2016-06-03 → 2016-07-01 |
| 31 | [3] Documentación de Arquitectura | 2016-06-03 → 2016-07-01 (+28d) | 2016-06-03 → 2016-07-01 (+28d) |  |  | 110d → 0d | none → 24 | was named [4] Documentación de Arquitectura; constraint finish no earlier than 2016-06-03 → none; baseline start 2016-06-03 → 2016-07-01; baseline finish 2016-06-03 → 2016-07-01 |
| 32 | [5] Documentación de Diseño de Interfaces | 2016-06-03 → 2016-07-01 (+28d) | 2016-06-03 → 2016-07-01 (+28d) |  |  | 110d → 0d | none → 25 | constraint start no earlier than 2016-06-03 → none; baseline start 2016-06-03 → 2016-07-01; baseline finish 2016-06-03 → 2016-07-01 |
| 33 | [6] Documentación Presentación Comercial |  |  |  |  | 56d → 0d | none → 26 | constraint start no earlier than 2016-08-26 → none |
| 34 | [7] Documentación Poster |  |  |  |  | 69.25d → 0d | none → 27 | constraint finish no earlier than 2016-08-05 → none |
| 35 | [8] Documentación Tablero de Control Primera Presentación | 2016-05-27 A | 2016-05-27 A |  | 0% → 100% | 114.75d → none | none → 28 | constraint start no earlier than 2016-05-27 → none |
| 36 | **Etapa 3: Análisis, Desarrollo y Testing** | 2016-06-13 → 2016-07-01 (+18d) | 2016-11-18 → 2016-11-08 (-10d) | 105.12d → 85d |  | 0d → 2d |  | baseline start 2016-06-13 → 2016-07-01; baseline finish 2016-11-18 → 2016-11-08 |
| 37 | **Incremento 3.1** | 2016-06-13 → 2016-07-01 (+18d) | 2016-08-05 → 2016-08-30 (+25d) | 36d → 38d |  | 69.12d → 2d |  | baseline start 2016-06-13 → 2016-07-01; baseline finish 2016-08-05 → 2016-08-30 |
| 38 | 3.1.1. Casos de uso de interfaces de usuario | 2016-06-13 → 2016-07-01 (+18d) | 2016-06-21 → 2016-07-11 (+20d) |  |  | 97.12d → 2d | none → 30 | constraint start no earlier than 2016-06-13 → none; baseline start 2016-06-13 → 2016-07-01; baseline finish 2016-06-21 → 2016-07-11 |
| 39 | 3.1.2. Casos de uso del módulo de gestión de perfiles | 2016-06-13 → 2016-07-01 (+18d) | 2016-06-21 → 2016-07-05 (+14d) | 5d → 2d |  | 69.12d → 85d | none → 30 | constraint start no earlier than 2016-06-13 → none; baseline start 2016-06-13 → 2016-07-01; baseline finish 2016-06-21 → 2016-07-05 |
| 40 | 3.1.3. Casos de uso del módulo de gestión de cursos | 2016-06-21 → 2016-07-05 (+14d) | 2016-06-24 → 2016-07-07 (+13d) | 3d → 2d |  | 69.12d → 85d |  | baseline start 2016-06-21 → 2016-07-05; baseline finish 2016-06-24 → 2016-07-07 |
| 41 | 3.1.4. Documentación de Casos de Prueba de Sistemas | 2016-06-21 → 2016-07-11 (+20d) | 2016-06-24 → 2016-07-14 (+20d) |  |  | 97.12d → 2d |  | baseline start 2016-06-21 → 2016-07-11; baseline finish 2016-06-24 → 2016-07-14 |
| 42 | 3.1.5. Documentación de Casos de Prueba Integrales | 2016-06-24 → 2016-07-07 (+13d) | 2016-06-29 → 2016-07-13 (+14d) |  |  | 69.12d → 85d |  | baseline start 2016-06-24 → 2016-07-07; baseline finish 2016-06-29 → 2016-07-13 |
| 43 | 3.1.6. Código fuente de interfaces de usuario | 2016-06-29 → 2016-07-14 (+15d) | 2016-07-15 → 2016-07-29 (+14d) |  |  | 69.12d → 2d | 42 → 41 | baseline start 2016-06-29 → 2016-07-14; baseline finish 2016-07-15 → 2016-07-29 |
| 44 | 3.1.7. Código fuente del módulo de gestión de perfiles | 2016-06-29 → 2016-07-29 (+30d) | 2016-07-06 → 2016-08-05 (+30d) |  |  | 79.12d → 2d | 42 → 43 | baseline start 2016-06-29 → 2016-07-29; baseline finish 2016-07-06 → 2016-08-05 |
| 45 | 3.1.8. Código fuente del módulo de gestión de cursos | 2016-07-15 → 2016-08-05 (+21d) | 2016-07-22 → 2016-08-12 (+21d) |  |  | 69.12d → 2d | 43 → 44 | baseline start 2016-07-15 → 2016-08-05; baseline finish 2016-07-22 → 2016-08-12 |
| 46 | 3.1.9. Documento de pruebas ejecutadas de Sistemas | 2016-07-22 → 2016-08-12 (+21d) | 2016-07-29 → 2016-08-23 (+25d) |  |  | 69.12d → 2d |  | baseline start 2016-07-22 → 2016-08-12; baseline finish 2016-07-29 → 2016-08-23 |
| 47 | 3.1.10. Documento de pruebas ejecutadas Integrales | 2016-07-29 → 2016-08-23 (+25d) | 2016-08-05 → 2016-08-30 (+25d) |  |  | 69.12d → 2d |  | baseline start 2016-07-29 → 2016-08-23; baseline finish 2016-08-05 → 2016-08-30 |
| 48 | [1] Código fuente de la aplicación | 2016-08-05 → 2016-08-30 (+25d) | 2016-08-05 → 2016-08-30 (+25d) |  |  | 27.12d → 2d | none → 47 | constraint start no earlier than 2016-08-05 → none; baseline start 2016-08-05 → 2016-08-30; baseline finish 2016-08-05 → 2016-08-30 |
| 49 | [2] Manual de usuario. | 2016-08-05 → 2016-08-30 (+25d) | 2016-08-05 → 2016-08-30 (+25d) |  |  | 27.12d → 54d | none → 47 | constraint start no earlier than 2016-08-05 → none; baseline start 2016-08-05 → 2016-08-30; baseline finish 2016-08-05 → 2016-08-30 |
| 50 | [3] Documento de pruebas ejecutadas de Sistemas e Integrales | 2016-08-05 → 2016-08-30 (+25d) | 2016-08-05 → 2016-08-30 (+25d) |  |  | 27.12d → 54d | none → 47 | constraint start no earlier than 2016-08-05 → none; baseline start 2016-08-05 → 2016-08-30; baseline finish 2016-08-05 → 2016-08-30 |
| 51 | [4] Documento de Casos de Uso/Arquitectura Incremento 1 | 2016-08-05 → 2016-08-30 (+25d) | 2016-08-05 → 2016-08-30 (+25d) |  |  | 27.12d → 54d | none → 47 | constraint start no earlier than 2016-08-05 → none; baseline start 2016-08-05 → 2016-08-30; baseline finish 2016-08-05 → 2016-08-30 |
| 52 | **Incremento 3.2** | 2016-08-08 → 2016-08-30 (+22d) | 2016-10-14 → 2016-11-08 (+25d) | 45.38d → 47d |  | 23.75d → 2d |  | baseline start 2016-08-08 → 2016-08-30; baseline finish 2016-10-14 → 2016-11-08 |
| 53 | 3.2.1. Casos de uso del módulo de autoaprendizaje del sistema | 2016-08-08 → 2016-08-30 (+22d) | 2016-08-16 → 2016-09-06 (+21d) |  |  | 64.12d → 49d | Entregables Incremento 3.1 → 48 | baseline start 2016-08-08 → 2016-08-30; baseline finish 2016-08-16 → 2016-09-06 |
| 54 | 3.2.2. Casos de uso del submódulo inteligente de selección de contenido (CAT) | 2016-08-08 → 2016-08-30 (+22d) | 2016-08-16 → 2016-09-06 (+21d) |  |  | 61.12d → 2d | Entregables Incremento 3.1 → 48 | baseline start 2016-08-08 → 2016-08-30; baseline finish 2016-08-16 → 2016-09-06 |
| 55 | 3.2.3. Casos de uso del módulo de gestión de contenido | 2016-08-08 → 2016-08-30 (+22d) | 2016-08-16 → 2016-09-06 (+21d) |  |  | 27.12d → 46d | Entregables Incremento 3.1 → 48 | baseline start 2016-08-08 → 2016-08-30; baseline finish 2016-08-16 → 2016-09-06 |
| 56 | 3.2.4. Documentación de Casos de Prueba de Sistemas | 2016-08-16 → 2016-09-06 (+21d) | 2016-08-19 → 2016-09-09 (+21d) |  |  | 61.12d → 2d |  | baseline start 2016-08-16 → 2016-09-06; baseline finish 2016-08-19 → 2016-09-09 |
| 57 | 3.2.5. Documentación de Casos de Prueba Integrales | 2016-08-16 → 2016-09-06 (+21d) | 2016-08-19 → 2016-09-09 (+21d) |  |  | 27.12d → 46d |  | baseline start 2016-08-16 → 2016-09-06; baseline finish 2016-08-19 → 2016-09-09 |
| 58 | 3.2.6. Código fuente del módulo de autoaprendizaje del sistema | 2016-08-19 → 2016-09-09 (+21d) | 2016-09-12 → 2016-10-03 (+21d) |  |  | 46.12d → 2d | 57 → 56 | baseline start 2016-08-19 → 2016-09-09; baseline finish 2016-09-12 → 2016-10-03 |
| 59 | 3.2.7. Código fuente del submódulo inteligente de selección de contenido (CAT) | 2016-08-19 → 2016-09-09 (+21d) | 2016-09-02 → 2016-09-26 (+24d) |  |  | 27.12d → 36d | 57 → 56 | baseline start 2016-08-19 → 2016-09-09; baseline finish 2016-09-02 → 2016-09-26 |
| 60 | 3.2.8. Código fuente del módulo de gestión de contenido | 2016-09-05 → 2016-10-03 (+28d) | 2016-09-19 → 2016-10-19 (+30d) |  |  | 27.12d → 2d | 59 → 58 | baseline start 2016-09-05 → 2016-10-03; baseline finish 2016-09-19 → 2016-10-19 |
| 61 | 3.2.9. Documento de pruebas ejecutadas de Sistemas | 2016-09-19 → 2016-10-19 (+30d) | 2016-09-28 → 2016-10-28 (+30d) |  |  | 27.12d → 2d |  | baseline start 2016-09-19 → 2016-10-19; baseline finish 2016-09-28 → 2016-10-28 |
| 62 | 3.2.10. Documento de pruebas ejecutadas Integrales | 2016-10-04 → 2016-10-28 (+24d) | 2016-10-14 → 2016-11-08 (+25d) |  |  | 23.75d → 2d |  | constraint finish no earlier than 2016-10-14 → none; baseline start 2016-10-04 → 2016-10-28; baseline finish 2016-10-14 → 2016-11-08 |
| 64 | [1] Código fuente de la aplicación | 2016-10-14 → 2016-11-08 (+25d) | 2016-10-14 → 2016-11-08 (+25d) |  |  | 21.75d → 2d | none → 62 | constraint start no earlier than 2016-10-14 → none; baseline start 2016-10-14 → 2016-11-08; baseline finish 2016-10-14 → 2016-11-08 |
| 65 | [2] Manual de usuario | 2016-10-14 → 2016-11-08 (+25d) | 2016-10-14 → 2016-11-08 (+25d) |  |  | 21.75d → 7d | none → 62 | constraint start no earlier than 2016-10-14 → none; baseline start 2016-10-14 → 2016-11-08; baseline finish 2016-10-14 → 2016-11-08 |
| 66 | [3] Documento de pruebas ejecutadas (Fin del desarollo 21/10) | 2016-10-14 → 2016-11-08 (+25d) | 2016-10-14 → 2016-11-08 (+25d) |  |  | 21.75d → 7d | none → 62 | constraint start no earlier than 2016-10-14 → none; baseline start 2016-10-14 → 2016-11-08; baseline finish 2016-10-14 → 2016-11-08 |
| 67 | [4] Documento Tablero de Control Segunda Presentación | 2016-09-16 → 2016-11-08 (+53d) | 2016-09-16 → 2016-11-08 (+53d) |  |  | 40.12d → 7d | none → 62 | constraint start no earlier than 2016-09-16 → none; baseline start 2016-09-16 → 2016-11-08; baseline finish 2016-09-16 → 2016-11-08 |
| 68 | [5] Documento de Casos de Uso/Arquitectura Incremento 2 | 2016-10-14 → 2016-11-08 (+25d) | 2016-10-14 → 2016-11-08 (+25d) |  |  | 21.75d → 7d | none → 62 | constraint start no earlier than 2016-10-14 → none; baseline start 2016-10-14 → 2016-11-08; baseline finish 2016-10-14 → 2016-11-08 |
| 69 | **Etapa 4: Implementación** | 2016-10-14 → 2016-11-08 (+25d) | 2016-11-04 → 2016-11-11 (+7d) | 14.25d → 2d |  | 9.5d → 2d |  | baseline start 2016-10-14 → 2016-11-08; baseline finish 2016-11-04 → 2016-11-11 |
| 70 | 4.1.Manuales de usuario | 2016-10-14 → 2016-11-08 (+25d) | 2016-10-18 → 2016-11-11 (+24d) |  |  | 21.75d → 2d | Entregables Incremento 3.2 → 64 | baseline start 2016-10-14 → 2016-11-08; baseline finish 2016-10-18 → 2016-11-11 |
| 71 | 4.2 Solución integral en entornos Productivos | 2016-10-14 → 2016-11-08 (+25d) | 2016-10-18 → 2016-11-11 (+24d) |  |  | 21.75d → 5d | Entregables Incremento 3.2 → 64 | baseline start 2016-10-14 → 2016-11-08; baseline finish 2016-10-18 → 2016-11-11 |
| 73 | [1] Documentación Manual de Usuario | 2016-10-21 → 2016-11-11 (+21d) | 2016-10-21 → 2016-11-11 (+21d) |  |  | 16.12d → 5d | none → 70 | constraint start no earlier than 2016-10-21 → none; baseline start 2016-10-21 → 2016-11-11; baseline finish 2016-10-21 → 2016-11-11 |

| ID | Task | Start | Finish | Duration | Total float | Predecessors | Other |
| --- | --- | --- | --- | --- | --- | --- | --- |
| 74 | [2] Documentación Solución integral en entornos Productivos | 2016-10-21 → 2016-11-11 (+21d) | 2016-10-21 → 2016-11-11 (+21d) |  | 16.12d → 5d | none → 71 | constraint finish no earlier than 2016-10-21 → none; baseline start 2016-10-21 → 2016-11-11; baseline finish 2016-10-21 → 2016-11-11 |
| 76 | **Etapa 5: Cierre** | 2016-11-11 → 2016-11-04 (-7d) |  | 5.62d → 9d |  |  | baseline start 2016-11-11 → 2016-11-04 |
| 77 | 5.1 Documento Lecciones Aprendidas | 2016-11-15 → 2016-11-11 (-4d) | 2016-11-18 → 2016-11-16 (-2d) |  | 0d → 2d | Entregables Etapa 4 → 70 | constraint finish no earlier than 2016-11-18 → none; baseline start 2016-11-15 → 2016-11-11; baseline finish 2016-11-18 → 2016-11-16 |
| 78 | 5.2 Documento Cierre del Proyecto | 2016-11-15 → 2016-11-11 (-4d) | 2016-11-18 → 2016-11-16 (-2d) |  | 0d → 2d | Entregables Etapa 4 → 70 | constraint finish no earlier than 2016-11-18 → none; baseline start 2016-11-15 → 2016-11-11; baseline finish 2016-11-18 → 2016-11-16 |
| 79 | 5.3 Presentación Final (18/11) | 2016-11-11 → 2016-11-04 (-7d) |  | 5d → 9d | 0.62d → 0d | none → 72 | constraint start no earlier than 2016-11-11 → none; baseline start 2016-11-11 → 2016-11-04 |
| 80 | [1] Documento Lecciones Aprendidas | 2016-11-18 → 2016-11-16 (-2d) | 2016-11-18 → 2016-11-16 (-2d) |  | 0.62d → 2d | none → 77 | constraint start no earlier than 2016-11-18 → none; baseline start 2016-11-18 → 2016-11-16; baseline finish 2016-11-18 → 2016-11-16 |
| 81 | [2] Documento Cierre del Proyecto | 2016-11-18 → 2016-11-16 (-2d) | 2016-11-18 → 2016-11-16 (-2d) |  | 0.62d → 2d | none → 80 | constraint start no earlier than 2016-11-18 → none; baseline start 2016-11-18 → 2016-11-16; baseline finish 2016-11-18 → 2016-11-16 |
| 82 | [3] Presentación Final | 2016-11-18 → 2016-11-16 (-2d) | 2016-11-18 → 2016-11-16 (-2d) |  | 0.62d → 2d | none → 81 | constraint finish no earlier than 2016-11-18 → none; baseline start 2016-11-18 → 2016-11-16; baseline finish 2016-11-18 → 2016-11-16 |

## Version 4 (data date 2011-06-02, saved 2016-06-26, file Gantt de Proyecto v1.4.mpp)

Note of the change: Merge branch 'master' of https://github.com/safabox/SAFE

Last finish stays 2016-11-18. Complete tasks 13 → 16.

Changed:

| ID | Task | Start | Finish | Complete | Total float | Other |
| --- | --- | --- | --- | --- | --- | --- |
| 1 | **Sistema adaptativo de formación educativa** |  |  | 20% → 38% |  |  |
| 2 | **Etapa 1: Inicio** |  |  | 39% → 72% |  |  |
| 4 | 1.1. Elaborar Acta de Proyecto |  |  | 0% → 75% |  |  |
| 6 | 1.3. Elaborar Gantt de Proyect |  | 2016-06-29 A | 45% → 100% | 93.25d → none |  |
| 8 | 1.5. Elaborar Matriz de Roles y Responsabilidades |  |  |  |  | was named 1.5. Elaborar Matriz de Roles y Responsabilidade |
| 10 | 1.7. Elaborar Matriz de Costos de Proyecto |  | 2016-06-17 A | 0% → 100% | 100d → none |  |
| 11 | 1.8. Elaborar Documentos Gestión de Riesgos |  |  | 48% → 50% |  |  |
| 13 | [1] Acta de Proyecto | 2016-07-01 A |  | 0% → 75% |  |  |
| 15 | [3] Gantt de Proyect | 2016-06-29 A | 2016-06-29 A | 0% → 100% | 93.25d → none |  |
| 17 | [5] Matriz de Roles y Responsabilidades |  |  |  |  | was named [5] Matriz de Roles y Responsabilidade |
| 20 | [8] Documentos Tabla de Riesgos | 2016-06-24 A |  | 0% → 25% |  |  |
| 21 | **Etapa 2: Relevamiento y Definición** |  |  | 20% → 42% |  |  |
| 23 | 2.2. Elaborar Casos de Uso del Negocio |  |  | 0% → 25% |  |  |
| 24 | 2.3. Elaborar Documento de Arquitectura |  |  | 0% → 50% |  |  |
| 25 | 2.4. Elaborar Documento de Diseño de Interfaces |  |  | 0% → 25% |  |  |

## Version 5 (data date 2011-06-02, saved 2016-08-04, file Gantt de Proyecto v1.4 - project2007.mpp)

Note of the change: Modificación casos de uso

Last finish stays 2016-11-18.

Changed:

| ID | Task | Other |
| --- | --- | --- |
| 38 | 3.1.1. Casos de uso - Gestión de Alumnas | was named 3.1.1. Casos de uso de interfaces de usuario |
| 39 | 3.1.2. Casos de uso - Gestión Docente | was named 3.1.2. Casos de uso del módulo de gestión de perfiles |
| 40 | 3.1.3. Casos de uso - Gestión Curso | was named 3.1.3. Casos de uso del módulo de gestión de cursos |

## Version 6 (data date 2011-06-02, saved 2016-08-08, file Gantt de Proyecto v1.4 - project2007.mpp)

Note of the change: Actulización 08/08

Last finish stays 2016-11-18. Complete tasks 16 → 17.

Changed:

| ID | Task | Finish | Complete | Total float |
| --- | --- | --- | --- | --- |
| 1 | **Sistema adaptativo de formación educativa** |  | 38% → 43% |  |
| 21 | **Etapa 2: Relevamiento y Definición** |  | 42% → 58% |  |
| 24 | 2.3. Elaborar Documento de Arquitectura | 2016-07-01 A | 50% → 100% | 0d → none |
| 25 | 2.4. Elaborar Documento de Diseño de Interfaces |  | 25% → 50% |  |

## Version 7 (data date 2011-06-02, saved 2016-08-08, file Gantt de Proyecto v1.5. - project2007.mpp)

Note of the change: Fin

Last finish stays 2016-11-18. Complete tasks 17 → 20.

Changed:

| ID | Task | Start | Finish | Duration | Complete | Total float | Predecessors | Other |
| --- | --- | --- | --- | --- | --- | --- | --- | --- |
| 1 | **Sistema adaptativo de formación educativa** |  |  | 151.25d → 151.5d | 43% → 55% |  |  |  |
| 2 | **Etapa 1: Inicio** |  | 2016-07-01 A |  | 72% → 100% | 92d → none |  |  |
| 4 | 1.1. Elaborar Acta de Proyecto |  | 2016-07-01 A |  | 75% → 100% | 92d → none |  |  |
| 11 | 1.8. Elaborar Documentos Gestión de Riesgos |  | 2016-06-24 A |  | 50% → 100% | 96.25d → none |  |  |
| 12 | 1.9. Aprobar Documentación |  | 2016-07-01 A |  | 0% → 100% | 92d → none |  |  |
| 13 | [1] Acta de Proyecto |  | 2016-07-01 A |  | 75% → 100% | 92d → none |  |  |
| 20 | [8] Documentos Tabla de Riesgos |  | 2016-06-24 A |  | 25% → 100% | 96.25d → none |  |  |
| 21 | **Etapa 2: Relevamiento y Definición** | 2016-05-20 A → 2016-05-27 A (+7d) | 2016-08-26 → 2016-09-09 (+14d) | 62.12d → 68.25d | 58% → 39% | 0d → 46.25d |  | baseline start 2016-05-20 → 2016-05-27; baseline finish 2016-08-26 → 2016-09-09 |
| 22 | 2.1. Elaborar Documentación e Información de Cursos | 2016-05-20 A → 2016-06-07 A (+18d) | 2016-06-24 A → 2016-06-24 | 21d → 12d | 100% → 50% | none → 96.5d |  | constraint none → finish no earlier than 2016-06-24; baseline start 2016-05-20 → 2016-06-07 |
| 23 | 2.2. Elaborar Casos de Uso del Negocio | 2016-05-20 A → 2016-07-18 A (+59d) | 2016-07-01 → 2016-08-09 (+39d) | 26d → 15d | 25% → 50% |  |  | constraint none → start no earlier than 2016-07-18; baseline start 2016-05-20 → 2016-07-18; baseline finish 2016-07-01 → 2016-08-09 |
| 24 | 2.3. Elaborar Documento de Arquitectura | 2016-05-20 A → 2016-07-25 A (+66d) | 2016-07-01 A → 2016-08-12 (+42d) | 26d → 14d | 100% → 50% | none → 61.94d |  | constraint none → start no earlier than 2016-07-25; baseline start 2016-05-20 → 2016-07-25; baseline finish 2016-07-01 → 2016-08-12 |
| 25 | 2.4. Elaborar Documento de Diseño de Interfaces | 2016-05-20 A → 2016-08-15 A (+87d) | 2016-07-01 → 2016-09-09 (+70d) | 26d → 4.88d |  | 0d → 46.25d | 14 → 24 | constraint none → finish no earlier than 2016-09-09; resources LD → ARQ; baseline start 2016-05-20 → 2016-08-15; baseline finish 2016-07-01 → 2016-09-09 |
| 27 | 2.6. Elaborar Poster | 2016-07-25 → 2016-08-01 (+7d) | 2016-08-05 → 2016-08-12 (+7d) |  |  | 0d → 64.25d |  | constraint start no earlier than 2016-07-25 → finish no earlier than 2016-08-12; baseline start 2016-07-25 → 2016-08-01; baseline finish 2016-08-05 → 2016-08-12 |
| 30 | [2] Documentaicón de Casos de Uso del Negocio | 2016-07-01 → 2016-08-09 (+39d) | 2016-07-01 → 2016-08-09 (+39d) |  |  |  |  | baseline start 2016-07-01 → 2016-08-09; baseline finish 2016-07-01 → 2016-08-09 |
| 31 | [3] Documentación de Arquitectura | 2016-07-01 → 2016-08-12 (+42d) | 2016-07-01 → 2016-08-12 (+42d) |  |  | 0d → 64.38d |  | baseline start 2016-07-01 → 2016-08-12; baseline finish 2016-07-01 → 2016-08-12 |
| 32 | [5] Documentación de Diseño de Interfaces | 2016-07-01 → 2016-09-09 (+70d) | 2016-07-01 → 2016-09-09 (+70d) |  |  | 0d → 46.25d |  | baseline start 2016-07-01 → 2016-09-09; baseline finish 2016-07-01 → 2016-09-09 |
| 34 | [7] Documentación Poster | 2016-08-05 → 2016-08-12 (+7d) | 2016-08-05 → 2016-08-12 (+7d) |  |  | 0d → 64.25d |  | baseline start 2016-08-05 → 2016-08-12; baseline finish 2016-08-05 → 2016-08-12 |
| 36 | **Etapa 3: Análisis, Desarrollo y Testing** | 2016-07-01 → 2016-08-09 A (+39d) | 2016-11-08 → 2016-11-11 (+3d) | 85d → 62d | 0% → 7% | 2d → 5d |  | baseline start 2016-07-01 → 2016-08-09; baseline finish 2016-11-08 → 2016-11-11 |
| 37 | **Incremento 3.1** | 2016-07-01 → 2016-08-09 A (+39d) | 2016-08-30 → 2016-09-09 (+10d) | 38d → 20d | 0% → 28% | 2d → 47d |  | baseline start 2016-07-01 → 2016-08-09; baseline finish 2016-08-30 → 2016-09-09 |
| 38 | 3.1.1. Casos de uso - Gestión de Alumnos | 2016-07-01 → 2016-08-09 A (+39d) | 2016-07-11 → 2016-08-12 (+32d) | 5d → 2d | 0% → 50% | 2d → 5.5d | 30 → 23 | was named 3.1.1. Casos de uso - Gestión de Alumnas; baseline start 2016-07-01 → 2016-08-09; baseline finish 2016-07-11 → 2016-08-12 |
| 39 | 3.1.2. Casos de uso - Gestión Docente | 2016-07-01 → 2016-08-09 A (+39d) | 2016-07-05 → 2016-08-10 (+36d) | 2d → 1d | 0% → 50% | 85d → 62d | 30 → 23 | constraint none → start no earlier than 2016-08-01; baseline start 2016-07-01 → 2016-08-09; baseline finish 2016-07-05 → 2016-08-10 |
| 40 | 3.1.3. Casos de uso - Gestión Curso | 2016-07-05 → 2016-08-10 (+36d) | 2016-07-07 → 2016-08-12 (+36d) | 2d → 1d |  | 85d → 62d |  | baseline start 2016-07-05 → 2016-08-10; baseline finish 2016-07-07 → 2016-08-12 |
| 41 | 3.1.4. Documentación de Casos de Prueba de Sistemas | 2016-07-11 → 2016-08-12 (+32d) | 2016-07-14 → 2016-08-18 (+35d) |  |  | 2d → 5.5d |  | baseline start 2016-07-11 → 2016-08-12; baseline finish 2016-07-14 → 2016-08-18 |
| 42 | 3.1.5. Documentación de Casos de Prueba Integrales | 2016-07-07 → 2016-08-12 (+36d) | 2016-07-13 → 2016-08-18 (+36d) |  |  | 85d → 62d |  | baseline start 2016-07-07 → 2016-08-12; baseline finish 2016-07-13 → 2016-08-18 |
| 43 | 3.1.6. Código fuente - Gestión de Alumnos | 2016-07-14 → 2016-08-18 A (+35d) | 2016-07-29 → 2016-08-24 (+26d) | 10d → 4d | 0% → 50% | 2d → 3.5d |  | was named 3.1.6. Código fuente de interfaces de usuario; baseline start 2016-07-14 → 2016-08-18; baseline finish 2016-07-29 → 2016-08-24 |
| 44 | 3.1.7. Código fuente - Gestión Docente | 2016-07-29 → 2016-08-24 A (+26d) | 2016-08-05 → 2016-08-29 (+24d) | 5d → 3d | 0% → 50% |  |  | was named 3.1.7. Código fuente del módulo de gestión de perfiles; baseline start 2016-07-29 → 2016-08-24; baseline finish 2016-08-05 → 2016-08-29 |
| 45 | 3.1.8. Código fuente - Gestión Curso | 2016-08-05 → 2016-08-29 A (+24d) | 2016-08-12 → 2016-09-02 (+21d) | 5d → 4d | 0% → 50% | 2d → 0d |  | was named 3.1.8. Código fuente del módulo de gestión de cursos; baseline start 2016-08-05 → 2016-08-29; baseline finish 2016-08-12 → 2016-09-02 |
| 46 | 3.1.9. Documento de pruebas ejecutadas de Sistemas | 2016-08-12 → 2016-09-02 (+21d) | 2016-08-23 → 2016-09-06 (+14d) | 5d → 2d |  | 2d → 0d |  | baseline start 2016-08-12 → 2016-09-02; baseline finish 2016-08-23 → 2016-09-06 |
| 47 | 3.1.10. Documento de pruebas ejecutadas Integrales | 2016-08-23 → 2016-09-06 (+14d) | 2016-08-30 → 2016-09-09 (+10d) | 5d → 2d |  | 2d → 0d |  | baseline start 2016-08-23 → 2016-09-06; baseline finish 2016-08-30 → 2016-09-09 |
| 48 | [1] Código fuente de la aplicación | 2016-08-30 → 2016-09-09 (+10d) | 2016-08-30 → 2016-09-09 (+10d) |  |  | 2d → 0d |  | baseline start 2016-08-30 → 2016-09-09; baseline finish 2016-08-30 → 2016-09-09 |
| 49 | [2] Manual de usuario. | 2016-08-30 → 2016-09-09 (+10d) | 2016-08-30 → 2016-09-09 (+10d) |  |  | 54d → 47d |  | baseline start 2016-08-30 → 2016-09-09; baseline finish 2016-08-30 → 2016-09-09 |
| 50 | [3] Documento de pruebas ejecutadas de Sistemas e Integrales | 2016-08-30 → 2016-09-09 (+10d) | 2016-08-30 → 2016-09-09 (+10d) |  |  | 54d → 47d |  | baseline start 2016-08-30 → 2016-09-09; baseline finish 2016-08-30 → 2016-09-09 |
| 51 | [4] Documento de Casos de Uso/Arquitectura Incremento 1 | 2016-08-30 → 2016-09-09 (+10d) | 2016-08-30 → 2016-09-09 (+10d) |  |  | 54d → 47d |  | baseline start 2016-08-30 → 2016-09-09; baseline finish 2016-08-30 → 2016-09-09 |
| 52 | **Incremento 3.2** | 2016-08-30 → 2016-09-02 (+3d) | 2016-11-08 → 2016-11-11 (+3d) | 47d → 46.88d |  | 2d → 4.88d |  | baseline start 2016-08-30 → 2016-09-02; baseline finish 2016-11-08 → 2016-11-11 |
| 53 | 3.2.1. Casos de uso del módulo de autoaprendizaje del sistema | 2016-08-30 → 2016-09-09 (+10d) | 2016-09-06 → 2016-09-16 (+10d) |  |  | 49d → 42d |  | baseline start 2016-08-30 → 2016-09-09; baseline finish 2016-09-06 → 2016-09-16 |
| 54 | 3.2.2. Casos de uso del submódulo inteligente de selección de contenido (CAT) | 2016-08-30 → 2016-09-09 (+10d) | 2016-09-06 → 2016-09-16 (+10d) |  |  | 2d → 0d |  | baseline start 2016-08-30 → 2016-09-09; baseline finish 2016-09-06 → 2016-09-16 |
| 55 | 3.2.3. Casos de uso del módulo de gestión de contenido | 2016-08-30 → 2016-09-09 (+10d) | 2016-09-06 → 2016-09-16 (+10d) |  |  | 46d → 39d |  | baseline start 2016-08-30 → 2016-09-09; baseline finish 2016-09-06 → 2016-09-16 |
| 56 | 3.2.4. Documentación de Casos de Prueba de Sistemas | 2016-09-06 → 2016-09-16 (+10d) | 2016-09-09 → 2016-09-21 (+12d) |  |  | 2d → 0d |  | baseline start 2016-09-06 → 2016-09-16; baseline finish 2016-09-09 → 2016-09-21 |
| 57 | 3.2.5. Documentación de Casos de Prueba Integrales | 2016-09-06 → 2016-09-16 (+10d) | 2016-09-09 → 2016-09-21 (+12d) |  |  | 46d → 39d |  | baseline start 2016-09-06 → 2016-09-16; baseline finish 2016-09-09 → 2016-09-21 |
| 58 | 3.2.6. Código fuente del módulo de autoaprendizaje del sistema | 2016-09-09 → 2016-09-21 (+12d) | 2016-10-03 → 2016-10-05 (+2d) | 15d → 10d |  | 2d → 0d |  | baseline start 2016-09-09 → 2016-09-21; baseline finish 2016-10-03 → 2016-10-05 |
| 59 | 3.2.7. Código fuente del submódulo inteligente de selección de contenido (CAT) | 2016-09-09 → 2016-09-21 (+12d) | 2016-09-26 → 2016-10-05 (+9d) |  |  | 36d → 29d |  | baseline start 2016-09-09 → 2016-09-21; baseline finish 2016-09-26 → 2016-10-05 |
| 60 | 3.2.8. Código fuente del módulo de gestión de contenido | 2016-10-03 → 2016-10-05 (+2d) | 2016-10-19 → 2016-10-21 (+2d) |  |  | 2d → 0d |  | baseline start 2016-10-03 → 2016-10-05; baseline finish 2016-10-19 → 2016-10-21 |
| 61 | 3.2.9. Documento de pruebas ejecutadas de Sistemas | 2016-10-19 → 2016-10-21 (+2d) | 2016-10-28 → 2016-11-01 (+4d) |  |  | 2d → 0d |  | baseline start 2016-10-19 → 2016-10-21; baseline finish 2016-10-28 → 2016-11-01 |
| 62 | 3.2.10. Documento de pruebas ejecutadas Integrales | 2016-10-28 → 2016-11-01 (+4d) | 2016-11-08 → 2016-11-11 (+3d) |  |  | 2d → 0d |  | baseline start 2016-10-28 → 2016-11-01; baseline finish 2016-11-08 → 2016-11-11 |
| 64 | [1] Código fuente de la aplicación | 2016-11-08 → 2016-11-11 (+3d) | 2016-11-08 → 2016-11-11 (+3d) |  |  | 2d → 0d |  | baseline start 2016-11-08 → 2016-11-11; baseline finish 2016-11-08 → 2016-11-11 |
| 65 | [2] Manual de usuario | 2016-11-08 → 2016-11-11 (+3d) | 2016-11-08 → 2016-11-11 (+3d) |  |  | 7d → 5d |  | baseline start 2016-11-08 → 2016-11-11; baseline finish 2016-11-08 → 2016-11-11 |
| 66 | [3] Documento de pruebas ejecutadas (Fin del desarollo 21/10) | 2016-11-08 → 2016-11-11 (+3d) | 2016-11-08 → 2016-11-11 (+3d) |  |  | 7d → 5d |  | baseline start 2016-11-08 → 2016-11-11; baseline finish 2016-11-08 → 2016-11-11 |
| 67 | [4] Documento Tablero de Control Segunda Presentación | 2016-11-08 → 2016-11-11 (+3d) | 2016-11-08 → 2016-11-11 (+3d) |  |  | 7d → 5d |  | baseline start 2016-11-08 → 2016-11-11; baseline finish 2016-11-08 → 2016-11-11 |
| 68 | [5] Documento de Casos de Uso/Arquitectura Incremento 2 | 2016-11-08 → 2016-11-11 (+3d) | 2016-11-08 → 2016-11-11 (+3d) |  |  | 7d → 5d |  | baseline start 2016-11-08 → 2016-11-11; baseline finish 2016-11-08 → 2016-11-11 |
| 69 | **Etapa 4: Implementación** | 2016-11-08 → 2016-11-11 (+3d) | 2016-11-11 → 2016-11-15 (+4d) |  |  | 2d → 0d |  | baseline start 2016-11-08 → 2016-11-11; baseline finish 2016-11-11 → 2016-11-15 |
| 70 | 4.1.Manuales de usuario | 2016-11-08 → 2016-11-11 (+3d) | 2016-11-11 → 2016-11-15 (+4d) |  |  | 2d → 0d |  | baseline start 2016-11-08 → 2016-11-11; baseline finish 2016-11-11 → 2016-11-15 |
| 71 | 4.2 Solución integral en entornos Productivos | 2016-11-08 → 2016-11-11 (+3d) | 2016-11-11 → 2016-11-15 (+4d) |  |  | 5d → 3d |  | baseline start 2016-11-08 → 2016-11-11; baseline finish 2016-11-11 → 2016-11-15 |
| 73 | [1] Documentación Manual de Usuario | 2016-11-11 → 2016-11-15 (+4d) | 2016-11-11 → 2016-11-15 (+4d) |  |  | 5d → 3d |  | baseline start 2016-11-11 → 2016-11-15; baseline finish 2016-11-11 → 2016-11-15 |
| 74 | [2] Documentación Solución integral en entornos Productivos | 2016-11-11 → 2016-11-15 (+4d) | 2016-11-11 → 2016-11-15 (+4d) |  |  | 5d → 3d |  | baseline start 2016-11-11 → 2016-11-15; baseline finish 2016-11-11 → 2016-11-15 |
| 76 | **Etapa 5: Cierre** |  |  | 9d → 9.25d |  |  |  |  |
| 77 | 5.1 Documento Lecciones Aprendidas | 2016-11-11 → 2016-11-15 (+4d) | 2016-11-16 → 2016-11-18 (+2d) |  |  | 2d → 0d |  | baseline start 2016-11-11 → 2016-11-15; baseline finish 2016-11-16 → 2016-11-18 |
| 78 | 5.2 Documento Cierre del Proyecto | 2016-11-11 → 2016-11-04 (-7d) | 2016-11-16 → 2016-11-09 (-7d) |  |  | 2d → 0.25d | 70 → 72 | baseline start 2016-11-11 → 2016-11-04; baseline finish 2016-11-16 → 2016-11-09 |
| 79 | 5.3 Presentación Final (18/11) | 2016-11-04 → 2016-11-09 (+5d) |  | 9d → 6d |  | 0d → 0.25d | 72 → 78 | baseline start 2016-11-04 → 2016-11-09 |
| 80 | [1] Documento Lecciones Aprendidas | 2016-11-16 → 2016-11-18 (+2d) | 2016-11-16 → 2016-11-18 (+2d) |  |  | 2d → 0d |  | baseline start 2016-11-16 → 2016-11-18; baseline finish 2016-11-16 → 2016-11-18 |
| 81 | [2] Documento Cierre del Proyecto | 2016-11-16 → 2016-11-18 (+2d) | 2016-11-16 → 2016-11-18 (+2d) |  |  | 2d → 0d |  | baseline start 2016-11-16 → 2016-11-18; baseline finish 2016-11-16 → 2016-11-18 |
| 82 | [3] Presentación Final | 2016-11-16 → 2016-11-18 (+2d) | 2016-11-16 → 2016-11-18 (+2d) |  |  | 2d → 0d |  | baseline start 2016-11-16 → 2016-11-18; baseline finish 2016-11-16 → 2016-11-18 |
